# Cronograma_SGCONT

Schedule from MS Project, 2013-03-05 to 2013-06-04, 2 hours a day, A marks actual dates.
Microsoft

## Calendars

- Reduzido: Mon-Fri 08:00-09:00, 13:00-14:00; Sat-Sun off.

## Resources

| Resource |
| --- |
| Sávio Luiz |
| Vivianne Sousa |
| Rômulo Aurélio |
| Sávio Luiz/Rômulo Aurêlio |
| Mariana Victor |
| Vinícius Medeiros |
| vivia |
| Vivi |

## Schedule

| ID | WBS | Task | Duration | Start | Finish | Predecessors | Complete | Remaining | Total slack | Free slack | Constraint | Resources | Work | Actual work |
| --- | --- | --- | --- | --- | --- | --- | --- | --- | --- | --- | --- | --- | --- | --- |
| 1 | 1 | Ata de Reunião 04/03 | 2h | 2013-03-05 08:00 | 2013-03-05 14:00 |  |  |  | 88.5d |  | start no earlier than 2013-03-05 08:00 | Sávio Luiz | 2h |  |
| 2 | 2 | Ata de Reunião 11/03 | 2h | 2013-03-12 08:00 | 2013-03-12 14:00 |  |  |  | 60d |  |  | Sávio Luiz | 2h |  |
| 3 | 3 | **Planejamento** | 16d | 2013-03-12 08:00 A | 2013-04-02 14:00 |  | 2% | 15.67d | 16.5d |  |  |  | 103.92h | 7.92h |
| 4 | 3.1 | Criação do Cronograma | 6h | 2013-03-12 08:00 | 2013-03-14 14:00 |  |  |  | 14.75d | 0d | start no earlier than 2013-03-12 08:00 | Sávio Luiz | 6h |  |
| 5 | 3.2 | Plano de Gerência de Riscos | 2h | 2013-03-21 08:00 | 2013-03-21 14:00 | 6 |  |  | 36.75d | 0d | start no earlier than 2013-03-16 08:00 | Sávio Luiz | 2h |  |
| 6 | 3.3 | Criação do Cronograma | 6h | 2013-03-15 08:00 | 2013-03-20 14:00 | 4 |  |  | 36.75d | 0d |  | Sávio Luiz | 6h |  |
| 7 | 3.4 | Criação do Cronograma | 6h | 2013-03-12 08:00 A | 2013-03-14 14:00 |  | 33% | 4h | 7.25d | 0d |  | Rômulo Aurélio | 11.92h | 7.92h |
| 8 | 3.5 | Documento de Visão (Planejamento do Projeto) | 4h | 2013-03-15 08:00 | 2013-03-18 14:00 | 7 |  |  | 41.75d | 0d | start no earlier than 2013-03-14 08:00 | Rômulo Aurélio | 4h |  |
| 9 | 3.6 | Termo de Abertura | 4h | 2013-03-19 08:00 | 2013-03-20 14:00 | 8 |  |  | 41.75d | 0d | start no earlier than 2013-03-13 08:00 | Rômulo Aurélio | 4h |  |
| 10 | 3.7 | Definição das metodologias | 4h | 2013-03-21 08:00 | 2013-03-22 14:00 | 9 |  |  | 41.75d | 0d |  | Rômulo Aurélio | 4h |  |
| 11 | 3.8 | Glossário | 8h | 2013-03-13 08:00 | 2013-03-18 14:00 |  |  |  | 64d | 0d | start no earlier than 2013-03-13 08:00 | Vivianne Sousa | 8h |  |
| 12 | 3.9 | Documento de Requisitos | 2h | 2013-03-19 08:00 | 2013-03-19 14:00 | 11 |  |  | 64d | 0d | start no earlier than 2013-03-14 08:00 | Vivianne Sousa | 2h |  |
| 13 | 3.10 | Levantamento e Criação da Arquitetura | 24h | 2013-03-12 08:00 | 2013-03-27 14:00 |  |  |  | 15.5d | 0d |  | Mariana Victor | 24h |  |
| 14 | 3.11 | Levantamento e Criação da Arquitetura | 8h | 2013-03-12 08:00 | 2013-03-15 14:00 |  |  |  | 0d |  |  | Vinícius Medeiros | 8h |  |
| 15 | 3.12 | Layout de Telas | 24h | 2013-03-18 08:00 | 2013-04-02 14:00 | 14 |  |  | 0d |  |  | Vinícius Medeiros | 24h |  |
| 16 | 4 | **Gerencia de Configuração** | 29d | 2013-04-03 08:00 | 2013-05-13 14:00 |  |  |  | 0d |  |  |  | 58h |  |
| 17 | 4.1 | Desenvolvimento do Plano de Configuração | 8h | 2013-04-03 08:00 | 2013-04-08 14:00 | 15 |  |  | 0d |  |  | Vinícius Medeiros | 8h |  |
| 18 | 4.2 | Criação, gerenciamento e organização do Controle de Versão – Subversion | 16h | 2013-04-09 08:00 | 2013-04-18 14:00 | 17 |  |  | 0d |  |  | Vinícius Medeiros | 16h |  |
| 19 | 4.3 | - Criação, gerenciamento e organização do Controle de Mudanças – Redmine | 16h | 2013-04-19 08:00 | 2013-04-30 14:00 | 18 |  |  | 0d |  |  | Vinícius Medeiros | 16h |  |
| 20 | 4.4 | Auditoria do repositório (cumprimento dos padrões, respeito à organização, etc.) | 12h | 2013-05-01 08:00 | 2013-05-08 14:00 | 19 |  |  | 0d |  |  | Vinícius Medeiros | 12h |  |
| 21 | 4.5 | Release Notes – Será desenvolvido a cada versão publicada do sistema | 6h | 2013-05-09 08:00 | 2013-05-13 14:00 | 20 |  |  | 0d |  |  | Vinícius Medeiros | 6h |  |
| 22 | 5 | **Especificações e diagrama de caso de uso** | 14.5d | 2013-03-20 08:00 | 2013-04-09 09:00 |  |  |  | 12d |  |  |  | 45h |  |
| 23 | 5.1 | Informar Empresa Contábil | 1h | 2013-03-20 08:00 | 2013-03-20 09:00 | 12 |  |  | 64d | 0d |  | Vivianne Sousa | 1h |  |
| 24 | 5.2 | Inserir Cliente | 4h | 2013-03-20 13:00 | 2013-03-22 09:00 | 23 |  |  | 64d | 0d |  | Vivianne Sousa | 4h |  |
| 25 | 5.3 | Manter Cliente | 4h | 2013-03-22 13:00 | 2013-03-26 09:00 | 24 |  |  | 64d | 0d |  | Vivianne Sousa | 4h |  |
| 26 | 5.4 | Inserir Contador | 1h | 2013-03-26 13:00 | 2013-03-26 14:00 | 25 |  |  | 64d | 0d |  | Vivianne Sousa | 1h |  |
| 27 | 5.5 | Manter Contador | 2h | 2013-03-27 08:00 | 2013-03-27 14:00 | 26 |  |  | 64d | 0d |  | Vivianne Sousa | 2h |  |
| 28 | 5.6 | Inserir Usuário | 1h | 2013-03-28 08:00 | 2013-03-28 09:00 | 27 |  |  | 64d | 0d |  | Vivianne Sousa | 1h |  |
| 29 | 5.7 | Manter Usuário | 2h | 2013-03-28 13:00 | 2013-03-29 09:00 | 28 |  |  | 64d | 0d |  | Vivianne Sousa | 2h |  |
| 30 | 5.8 | Inserir Setor | 3h | 2013-03-29 13:00 | 2013-04-01 14:00 | 29 |  |  | 64d | 0d |  | Vivianne Sousa | 3h |  |
| 31 | 5.9 | Manter Setor | 4h | 2013-04-02 08:00 | 2013-04-03 14:00 | 30 |  |  | 64d | 0d |  | Vivianne Sousa | 4h |  |
| 32 | 5.10 | Informar Agenda | 16h | 2013-03-25 08:00 | 2013-04-03 14:00 | 10 |  |  | 41.75d |  |  | Rômulo Aurélio | 16h |  |
| 33 | 5.11 | Inserir Despesa | 1h | 2013-04-04 08:00 | 2013-04-04 09:00 | 31 |  |  | 64d | 0d |  | Vivianne Sousa | 1h |  |
| 34 | 5.12 | Manter Despesa | 2h | 2013-04-04 13:00 | 2013-04-05 09:00 | 33 |  |  | 64d | 0d |  | Vivianne Sousa | 2h |  |
| 35 | 5.13 | Inserir Receita | 1h | 2013-04-05 13:00 | 2013-04-05 14:00 | 34 |  |  | 64d | 0d |  | Vivianne Sousa | 1h |  |
| 36 | 5.14 | Manter Receita | 2h | 2013-04-08 08:00 | 2013-04-08 14:00 | 35 |  |  | 64d | 0d |  | Vivianne Sousa | 2h |  |
| 37 | 5.15 | Efetuar Login | 1h | 2013-04-09 08:00 | 2013-04-09 09:00 | 36 |  |  | 64d |  |  | Vivianne Sousa | 1h |  |
| 38 | 6 | Manual de utilização | 24h | 2013-05-14 08:00 | 2013-05-29 14:00 | 21 |  |  | 0d |  |  | Vinícius Medeiros | 24h |  |

| ID | WBS | Task | Type | Duration | Start | Finish | Predecessors | Total slack | Free slack | Resources | Work |
| --- | --- | --- | --- | --- | --- | --- | --- | --- | --- | --- | --- |
| 39 | 7 | **Arquitetura** |  | 61d | 2013-03-12 08:00 | 2013-06-04 14:00 |  | 0d |  |  | 277h |
| 40 | 7.1 | Definição e Implementação (Feito no planejamento) | milestone | 0h | 2013-03-12 08:00 | 2013-03-12 08:00 |  | 46d |  |  |  |
| 41 | 7.2 | Layout de Telas (Feito no planejamento) | milestone | 0h | 2013-03-12 08:00 | 2013-03-12 08:00 |  | 46d |  |  |  |
| 42 | 7.3 | Documento de Arquitetura |  | 6h | 2013-03-28 08:00 | 2013-04-01 14:00 | 13 | 68.5d | 0d | Mariana Victor | 6h |
| 43 | 7.4 | **Diagramas UML** |  | 11.75d | 2013-03-22 08:00 | 2013-04-08 13:30 |  | 13.25d |  |  | 27.5h |
| 44 | 7.4.1 | Diagrama de Arquitetura - Revisão/Atualização |  | 2h | 2013-04-02 08:00 | 2013-04-02 14:00 | 42 | 68.5d |  | Mariana Victor | 2h |
| 45 | 7.4.2 | **Diagrama de Classes** |  | 9.5d | 2013-03-22 08:00 | 2013-04-04 09:00 |  | 14.75d |  |  | 20h |
| 46 | 7.4.2.1 | Efetuar Login - Revisão/Atualização |  | 0.5h | 2013-03-22 08:00 | 2013-03-22 08:30 | 5 | 36.75d | 0d | Sávio Luiz | 0.5h |
| 47 | 7.4.2.2 | Inserir Empresa Contábil - Revisão/Atualização |  | 0.5h | 2013-03-22 08:30 | 2013-03-22 09:00 | 46 | 36.75d | 0d | Sávio Luiz | 0.5h |
| 48 | 7.4.2.3 | Inserir Cliente - Revisão/Atualização |  | 2h | 2013-03-22 13:00 | 2013-03-25 09:00 | 47 | 36.75d | 0d | Sávio Luiz | 2h |
| 49 | 7.4.2.4 | Manter Cliente - Criação |  | 2h | 2013-03-25 13:00 | 2013-03-26 09:00 | 48 | 36.75d | 0d | Sávio Luiz | 2h |
| 50 | 7.4.2.5 | Inserir Despesa - Revisão/Atualização |  | 0.5h | 2013-03-26 13:00 | 2013-03-26 13:30 | 49 | 36.75d | 0d | Sávio Luiz | 0.5h |
| 51 | 7.4.2.6 | Manter Despesa - Criação |  | 1h | 2013-03-26 13:30 | 2013-03-27 08:30 | 50 | 14.75d | 0d | Sávio Luiz | 1h |
| 52 | 7.4.2.7 | Inserir Receita - Revisão/Atualização |  | 0.5h | 2013-03-27 08:30 | 2013-03-27 09:00 | 51 | 14.75d | 0d | Sávio Luiz | 0.5h |
| 53 | 7.4.2.8 | Manter Receita - Criação |  | 1h | 2013-03-27 13:00 | 2013-03-27 14:00 | 52 | 38.25d | 0d | Sávio Luiz | 1h |
| 54 | 7.4.2.9 | Inserir Contador - Criação |  | 1.5h | 2013-03-28 08:00 | 2013-03-28 13:30 | 53 | 38.25d | 0d | Sávio Luiz | 1.5h |
| 55 | 7.4.2.10 | Manter Contador - Criação |  | 1.5h | 2013-03-28 13:30 | 2013-03-29 09:00 | 54 | 14.75d | 0d | Sávio Luiz | 1.5h |
| 56 | 7.4.2.11 | Inserir Usuário - Criação |  | 1.5h | 2013-03-29 13:00 | 2013-04-01 08:30 | 55 | 38.25d | 0d | Sávio Luiz | 1.5h |
| 57 | 7.4.2.12 | Manter Usuário - Criação |  | 1.5h | 2013-04-01 08:30 | 2013-04-01 14:00 | 56 | 14.75d | 0d | Sávio Luiz | 1.5h |
| 58 | 7.4.2.13 | Inserir Setor - Criação |  | 1.5h | 2013-04-02 08:00 | 2013-04-02 13:30 | 57 | 38.25d | 0d | Sávio Luiz | 1.5h |
| 59 | 7.4.2.14 | Manter Setor - Criação |  | 1.5h | 2013-04-02 13:30 | 2013-04-03 09:00 | 58 | 14.75d | 0d | Sávio Luiz | 1.5h |
| 60 | 7.4.2.15 | Informar Agenda - Criação |  | 3h | 2013-04-03 08:00 | 2013-04-04 09:00 | 44 | 30d | 0d | Mariana Victor | 3h |
| 61 | 7.4.3 | **Diagrama de Seqüência** |  | 2.5d | 2013-04-04 08:00 | 2013-04-08 09:00 |  | 7.25d |  |  | 5h |
| 62 | 7.4.3.1 | Efetuar Login - Revisão/Atualização |  | 0.5h | 2013-04-04 08:00 | 2013-04-04 08:30 | 32 | 41.75d | 0d | Rômulo Aurélio | 0.5h |
| 63 | 7.4.3.2 | Inserir Cliente - Revisão/Atualização |  | 1h | 2013-04-04 08:30 | 2013-04-04 13:30 | 62 | 41.75d | 0d | Rômulo Aurélio | 1h |
| 64 | 7.4.3.3 | Inserir Despesa - Revisão/Atualização |  | 0.5h | 2013-04-04 13:30 | 2013-04-04 14:00 | 63 | 41.75d | 0d | Rômulo Aurélio | 0.5h |
| 65 | 7.4.3.4 | Inserir Receita - Revisão/Atualização |  | 0.5h | 2013-04-05 08:00 | 2013-04-05 08:30 | 64 | 41.75d | 0d | Rômulo Aurélio | 0.5h |
| 66 | 7.4.3.5 | Inserir Empresa Contábil - Revisão/Atualização |  | 0.5h | 2013-04-05 08:30 | 2013-04-05 09:00 | 65 | 41.75d | 0d | Rômulo Aurélio | 0.5h |
| 67 | 7.4.3.6 | Informar Agenda |  | 2h | 2013-04-05 13:00 | 2013-04-08 09:00 | 66 | 41.75d | 0d | Rômulo Aurélio | 2h |
| 68 | 7.4.4 | Diagrama de Distribuição - Revisão/Atualização |  | 0.5h | 2013-04-08 13:00 | 2013-04-08 13:30 | 67 | 41.75d |  | Rômulo Aurélio | 0.5h |
| 69 | 7.5 | Modelo de Banco de Dados - Revisão/Atualização |  | 6h | 2013-04-03 13:00 | 2013-04-08 09:00 | 59 | 38.25d | 0d | Sávio Luiz | 6h |

| ID | WBS | Task | Duration | Start | Finish | Predecessors | Total slack | Free slack | Resources | Work |
| --- | --- | --- | --- | --- | --- | --- | --- | --- | --- | --- |
| 70 | 7.6 | **Implementação** | 28d | 2013-04-04 13:00 | 2013-05-14 09:00 |  | 14.5d |  |  | 144h |
| 71 | 7.6.1 | Efetuar Login | 4h | 2013-04-08 13:30 | 2013-04-10 13:30 | 68 | 39.25d |  | Rômulo Aurélio | 4h |
| 72 | 7.6.2 | Inserir Empresa Contábil | 8h | 2013-04-09 13:00 | 2013-04-15 09:00 | 37 | 12d | 0d | Vivianne Sousa | 8h |
| 73 | 7.6.3 | Inserir Cliente | 16h | 2013-04-04 13:00 | 2013-04-16 09:00 | 60 | 30d | 0d | Mariana Victor | 16h |
| 74 | 7.6.4 | Manter Cliente | 18h | 2013-04-15 13:00 | 2013-04-26 09:00 | 72 | 12d | 0d | Vivianne Sousa | 18h |
| 75 | 7.6.5 | Inserir Despesa | 4h | 2013-04-26 13:00 | 2013-04-30 09:00 | 74 | 12d | 0d | Vivianne Sousa | 4h |
| 76 | 7.6.6 | Manter Despesa | 6h | 2013-04-30 13:00 | 2013-05-03 09:00 | 75 | 12d | 0d | Vivianne Sousa | 6h |
| 77 | 7.6.7 | Inserir Receita | 4h | 2013-04-08 13:30 | 2013-04-10 13:30 | 68 | 12.25d | 0d | Rômulo Aurélio | 4h |
| 78 | 7.6.8 | Manter Receita | 6h | 2013-04-10 13:30 | 2013-04-15 13:30 | 77 | 12.25d | 0d | Rômulo Aurélio | 6h |
| 79 | 7.6.9 | Inserir Contador | 4h | 2013-04-15 13:30 | 2013-04-17 13:30 | 78 | 12.25d | 0d | Rômulo Aurélio | 4h |
| 80 | 7.6.10 | Manter Contador | 6h | 2013-04-17 13:30 | 2013-04-22 13:30 | 79 | 12.25d | 0d | Rômulo Aurélio | 6h |
| 81 | 7.6.11 | Inserir Usuário | 6h | 2013-04-22 13:30 | 2013-04-25 13:30 | 80 | 12.25d | 0d | Rômulo Aurélio | 6h |
| 82 | 7.6.12 | Manter Usuário | 8h | 2013-04-25 13:30 | 2013-05-01 13:30 | 81 | 12.25d | 0d | Rômulo Aurélio | 8h |
| 83 | 7.6.13 | Inserir Setor | 6h | 2013-05-01 13:30 | 2013-05-06 13:30 | 82 | 12.25d | 0d | Rômulo Aurélio | 6h |
| 84 | 7.6.14 | Manter Setor | 8h | 2013-05-06 13:30 | 2013-05-10 13:30 | 83 | 12.25d | 0d | Rômulo Aurélio | 8h |
| 85 | 7.6.15 | Informar Agenda | 40h | 2013-04-16 13:00 | 2013-05-14 09:00 | 73 | 15.5d |  | Mariana Victor | 40h |
| 86 | 7.7 | Manual de instalação (implantação) - Criação | 8h | 2013-05-30 08:00 | 2013-06-04 14:00 | 38 | 0d |  | Vinícius Medeiros | 8h |
| 87 | 7.8 | **Testes** | 29.5d | 2013-04-08 13:00 | 2013-05-17 14:00 |  | 12d |  |  | 85.5h |
| 88 | 7.8.1 | Plano de testes | 4h | 2013-05-03 13:00 | 2013-05-07 09:00 | 76 | 12d | 0d | Vivianne Sousa | 4h |
| 89 | 7.8.2 | Projeto de testes | 4h | 2013-04-08 13:00 | 2013-04-10 09:00 | 69 | 38.25d | 0d | Sávio Luiz | 4h |
| 90 | 7.8.3 | **Registros dos testes** | 27.5d | 2013-04-10 13:00 | 2013-05-17 14:00 |  | 12d |  |  | 77.5h |
| 91 | 7.8.3.1 | **Casos de Teste** | 10.25d | 2013-04-10 13:00 | 2013-04-24 13:30 |  | 14.75d |  |  | 20.5h |
| 92 | 7.8.3.1.1 | Efetuar Login | 0.5h | 2013-04-10 13:00 | 2013-04-10 13:30 | 89 | 38.25d | 0d | Sávio Luiz | 0.5h |
| 93 | 7.8.3.1.2 | Inserir Empresa Contábil | 2h | 2013-04-10 13:30 | 2013-04-11 13:30 | 92 | 14.75d | 0d | Sávio Luiz | 2h |
| 94 | 7.8.3.1.3 | Inserir Cliente | 2h | 2013-04-11 13:30 | 2013-04-12 13:30 | 93 | 14.75d | 0d | Sávio Luiz | 2h |
| 95 | 7.8.3.1.4 | Manter Cliente | 2h | 2013-04-12 13:30 | 2013-04-15 13:30 | 94 | 14.75d | 0d | Sávio Luiz | 2h |
| 96 | 7.8.3.1.5 | Inserir Despesa | 1h | 2013-04-15 13:30 | 2013-04-16 08:30 | 95 | 14.75d | 0d | Sávio Luiz | 1h |
| 97 | 7.8.3.1.6 | Manter Despesa | 1h | 2013-04-16 08:30 | 2013-04-16 13:30 | 96 | 14.75d | 0d | Sávio Luiz | 1h |
| 98 | 7.8.3.1.7 | Inserir Receita | 1h | 2013-04-16 13:30 | 2013-04-17 08:30 | 97 | 14.75d | 0d | Sávio Luiz | 1h |
| 99 | 7.8.3.1.8 | Manter Receita | 1h | 2013-04-17 08:30 | 2013-04-17 13:30 | 98 | 14.75d | 0d | Sávio Luiz | 1h |
| 100 | 7.8.3.1.9 | Inserir Contador | 1h | 2013-04-17 13:30 | 2013-04-18 08:30 | 99 | 14.75d | 0d | Sávio Luiz | 1h |
| 101 | 7.8.3.1.10 | Manter Contador | 1h | 2013-04-18 08:30 | 2013-04-18 13:30 | 100 | 14.75d | 0d | Sávio Luiz | 1h |
| 102 | 7.8.3.1.11 | Inserir Usuário | 1h | 2013-04-18 13:30 | 2013-04-19 08:30 | 101 | 14.75d | 0d | Sávio Luiz | 1h |
| 103 | 7.8.3.1.12 | Manter Usuário | 1h | 2013-04-19 08:30 | 2013-04-19 13:30 | 102 | 14.75d | 0d | Sávio Luiz | 1h |
| 104 | 7.8.3.1.13 | Inserir Setor | 1h | 2013-04-19 13:30 | 2013-04-22 08:30 | 103 | 14.75d | 0d | Sávio Luiz | 1h |
| 105 | 7.8.3.1.14 | Manter Setor | 1h | 2013-04-22 08:30 | 2013-04-22 13:30 | 104 | 14.75d | 0d | Sávio Luiz | 1h |
| 106 | 7.8.3.1.15 | Informar Agenda | 4h | 2013-04-22 13:30 | 2013-04-24 13:30 | 105 | 14.75d | 0d | Sávio Luiz | 4h |

| ID | WBS | Task | Duration | Start | Finish | Predecessors | Total slack | Free slack | Resources | Work |
| --- | --- | --- | --- | --- | --- | --- | --- | --- | --- | --- |
| 107 | 7.8.3.2 | **Automatização de Testes** | 13d | 2013-04-24 13:30 | 2013-05-13 13:30 |  | 12.25d |  |  | 20.5h |
| 108 | 7.8.3.2.1 | Efetuar Login | 0.5h | 2013-04-24 13:30 | 2013-04-24 14:00 | 106 | 38.25d | 0d | Sávio Luiz | 0.5h |
| 109 | 7.8.3.2.2 | Inserir Empresa Contábil | 2h | 2013-04-25 08:00 | 2013-04-25 14:00 | 108 | 38.25d | 0d | Sávio Luiz | 2h |
| 110 | 7.8.3.2.3 | Inserir Cliente | 2h | 2013-04-26 08:00 | 2013-04-26 14:00 | 109 | 38.25d | 0d | Sávio Luiz | 2h |
| 111 | 7.8.3.2.4 | Manter Cliente | 2h | 2013-04-29 08:00 | 2013-04-29 14:00 | 110 | 38.25d | 0d | Sávio Luiz | 2h |
| 112 | 7.8.3.2.5 | Inserir Despesa | 1h | 2013-05-10 13:30 | 2013-05-13 08:30 | 84 | 12.25d | 0d | Rômulo Aurélio | 1h |
| 113 | 7.8.3.2.6 | Manter Despesa | 1h | 2013-05-13 08:30 | 2013-05-13 13:30 | 112 | 12.25d |  | Rômulo Aurélio | 1h |
| 114 | 7.8.3.2.7 | Inserir Receita | 1h | 2013-05-07 13:00 | 2013-05-07 14:00 | 88 | 12d | 0d | Vivianne Sousa | 1h |
| 115 | 7.8.3.2.8 | Manter Receita | 1h | 2013-05-08 08:00 | 2013-05-08 09:00 | 114 | 12d | 0d | Vivianne Sousa | 1h |
| 116 | 7.8.3.2.9 | Inserir Contador | 1h | 2013-05-08 13:00 | 2013-05-08 14:00 | 115 | 12d | 0d | Vivianne Sousa | 1h |
| 117 | 7.8.3.2.10 | Manter Contador | 1h | 2013-05-09 08:00 | 2013-05-09 09:00 | 116 | 12d | 0d | Vivianne Sousa | 1h |
| 118 | 7.8.3.2.11 | Inserir Usuário | 1h | 2013-05-09 13:00 | 2013-05-09 14:00 | 117 | 12d | 0d | Vivianne Sousa | 1h |
| 119 | 7.8.3.2.12 | Manter Usuário | 1h | 2013-05-10 08:00 | 2013-05-10 09:00 | 118 | 12d | 0d | Vivianne Sousa | 1h |
| 120 | 7.8.3.2.13 | Inserir Setor | 1h | 2013-04-30 08:00 | 2013-04-30 09:00 | 111 | 38.25d | 0d | Sávio Luiz | 1h |
| 121 | 7.8.3.2.14 | Manter Setor | 1h | 2013-04-30 13:00 | 2013-04-30 14:00 | 120 | 38.25d | 0d | Sávio Luiz | 1h |
| 122 | 7.8.3.2.15 | Informar Agenda | 4h | 2013-05-01 08:00 | 2013-05-02 14:00 | 121 | 38.25d | 0d | Sávio Luiz | 4h |
| 123 | 7.8.3.3 | **Execução de Testes** | 10.75d | 2013-05-03 08:00 | 2013-05-17 13:30 |  | 12.25d |  |  | 20.5h |
| 124 | 7.8.3.3.1 | Efetuar Login | 0.5h | 2013-05-03 08:00 | 2013-05-03 08:30 | 122 | 38.25d | 0d | Sávio Luiz | 0.5h |
| 125 | 7.8.3.3.2 | Inserir Empresa Contábil | 2h | 2013-05-03 08:30 | 2013-05-06 08:30 | 124 | 38.25d | 0d | Sávio Luiz | 2h |
| 126 | 7.8.3.3.3 | Inserir Cliente | 2h | 2013-05-06 08:30 | 2013-05-07 08:30 | 125 | 38.25d | 0d | Sávio Luiz | 2h |
| 127 | 7.8.3.3.4 | Manter Cliente | 2h | 2013-05-13 13:30 | 2013-05-14 13:30 | 113 | 12.25d | 0d | Rômulo Aurélio | 2h |
| 128 | 7.8.3.3.5 | Inserir Despesa | 1h | 2013-05-14 13:30 | 2013-05-15 08:30 | 127 | 12.25d | 0d | Rômulo Aurélio | 1h |
| 129 | 7.8.3.3.6 | Manter Despesa | 1h | 2013-05-15 08:30 | 2013-05-15 13:30 | 128 | 12.25d | 0d | Rômulo Aurélio | 1h |
| 130 | 7.8.3.3.7 | Inserir Receita | 1h | 2013-05-15 13:30 | 2013-05-16 08:30 | 129 | 12.25d | 0d | Rômulo Aurélio | 1h |
| 131 | 7.8.3.3.8 | Manter Receita | 1h | 2013-05-16 08:30 | 2013-05-16 13:30 | 130 | 12.25d | 0d | Rômulo Aurélio | 1h |
| 132 | 7.8.3.3.9 | Inserir Contador | 1h | 2013-05-16 13:30 | 2013-05-17 08:30 | 131 | 12.25d | 0d | Rômulo Aurélio | 1h |
| 133 | 7.8.3.3.10 | Manter Contador | 1h | 2013-05-17 08:30 | 2013-05-17 13:30 | 132 | 12.25d |  | Rômulo Aurélio | 1h |
| 134 | 7.8.3.3.11 | Inserir Usuário | 1h | 2013-05-10 13:00 | 2013-05-10 14:00 | 119 | 12d | 0d | Vivianne Sousa | 1h |
| 135 | 7.8.3.3.12 | Manter Usuário | 1h | 2013-05-13 08:00 | 2013-05-13 09:00 | 134 | 16.5d |  | Vivianne Sousa | 1h |
| 136 | 7.8.3.3.13 | Inserir Setor | 1h | 2013-05-13 08:00 | 2013-05-13 09:00 | 134 | 12d | 0d | Vivianne Sousa | 1h |
| 137 | 7.8.3.3.14 | Manter Setor | 1h | 2013-05-13 13:00 | 2013-05-13 14:00 | 136 | 12d | 0d | Vivianne Sousa | 1h |
| 138 | 7.8.3.3.15 | Informar Agenda | 4h | 2013-05-07 08:30 | 2013-05-09 08:30 | 126 | 38.25d | 0d | Sávio Luiz | 4h |
| 139 | 7.8.3.4 | Teste Integração | 8h | 2013-05-09 08:30 | 2013-05-15 08:30 | 138 | 14.75d |  | Sávio Luiz | 8h |
| 140 | 7.8.3.5 | Teste Integração | 8h | 2013-05-14 08:00 | 2013-05-17 14:00 | 137 | 12d |  | Vivianne Sousa | 8h |
